Schedule from a web Gantt chart, 2026-08-24 to 2026-08-24.
Saturdays and Sundays are off

## Schedule

| ID | WBS | Task | Duration | Start | Finish | Status |
| --- | --- | --- | --- | --- | --- | --- |
| 2 | 1 | **SDV rework** | 1d | 2026-08-24 | 2026-08-24 |  |
| 3 | 1.1 | Plan A: 增加锡重新回流 | 1d | 2026-08-24 | 2026-08-24 |  |
| 4 | 1.2 | Plan B：小锡炉返修 | 1d | 2026-08-24 | 2026-08-24 | failed |
| 5 | 1.3 | **Plan C: 波峰焊返修** | 1d | 2026-08-24 | 2026-08-24 |  |
| 6 | 1.3.1 | 波峰焊治具评估验证 | 1d | 2026-08-24 | 2026-08-24 |  |
| 7 | 2 | **SDV-SIT DC module焊接验证** | 1d | 2026-08-24 | 2026-08-24 |  |
| 8 | 2.1 | 波峰焊验证 | 1d | 2026-08-24 | 2026-08-24 |  |
| 9 | 2.2 | 回流焊验证 | 1d | 2026-08-24 | 2026-08-24 |  |

Notes:
- 3: 无效果，锡在PTH孔外融化
- 4: 小锡炉放置区域无380V供电
